# ECG Time Series Analysis and Static Web Demo

Schedule from MS Project XML, 2026-10-01 to 2026-12-09, costs in ₫.

## Calendars

- Standard: Mon-Fri 08:00-12:00, 13:00-17:00; Sat-Sun off.

## Resources

| Resource | Rate | Notes |
| --- | --- | --- |
| Nguyễn Tuấn Anh | 600000 | Project manager; integration and report; illustrative professional replacement-cost rate, not an actual payment |
| Vũ Quốc Huy | 500000 | ECG data and signal processing lead; illustrative professional replacement-cost rate, not an actual payment |
| Trần Tuấn Anh | 500000 | HR forecasting lead; illustrative professional replacement-cost rate, not an actual payment |
| Mai Tuấn Mạnh | 550000 | ML and CNN classification lead; illustrative professional replacement-cost rate, not an actual payment |
| Nguyễn Quang Huy | 550000 | ST-MEM lead; illustrative professional replacement-cost rate, not an actual payment |
| Hoàng Thị Ngọc Hân | 450000 | Static web demo and UX lead; illustrative professional replacement-cost rate, not an actual payment |

## Schedule

| ID | WBS | Task | Type | Duration | Start | Finish | Predecessors | Baseline start | Baseline finish | Baseline duration | Total slack | Resources | Work | Cost | Baseline cost |
| --- | --- | --- | --- | --- | --- | --- | --- | --- | --- | --- | --- | --- | --- | --- | --- |
| 1 | 1 | **Phase 1: Initiation and integrated planning** |  | 5d | 2026-10-01 | 2026-10-07 |  | 2026-10-01 | 2026-10-07 | 5d | 0d |  | 24h | 134,000 | 134,000 |
| 2 | 1.1 | Project charter, scope and acceptance criteria |  | 2d | 2026-10-01 | 2026-10-02 |  | 2026-10-01 | 2026-10-02 | 2d | 0d | Nguyễn Tuấn Anh [37.5%]; Vũ Quốc Huy [12.5%] | 8h | 46,000 | 46,000 |
| 3 | 1.2 | Integrated WBS, schedule and resource plan |  | 2d | 2026-10-05 | 2026-10-06 | 2 | 2026-10-05 | 2026-10-06 | 2d | 0d | Nguyễn Tuấn Anh [37.5%]; Trần Tuấn Anh [12.5%]; Hoàng Thị Ngọc Hân [12.5%] | 10h | 55,000 | 55,000 |
| 4 | 1.3 | Quality, risk and communication baseline with plan review |  | 1d | 2026-10-07 | 2026-10-07 | 3 | 2026-10-07 | 2026-10-07 | 1d | 0d | Nguyễn Tuấn Anh [50%]; Hoàng Thị Ngọc Hân [25%] | 6h | 33,000 | 33,000 |
| 5 | 1.4 | M1: Integrated project plan gate | milestone | 0d | 2026-10-07 | 2026-10-07 | 4 | 2026-10-07 | 2026-10-07 | 0d | 0d |  |  |  |  |
| 6 | 2 | **Phase 2: ECG data foundation** |  | 10d | 2026-10-08 | 2026-10-21 |  | 2026-10-08 | 2026-10-21 | 10d | 0d |  | 48h | 253,500 | 253,500 |
| 7 | 2.1 | MIT-BIH inventory and ECG exploration baseline |  | 4d | 2026-10-08 | 2026-10-13 | 5 | 2026-10-08 | 2026-10-13 | 4d | 0d | Vũ Quốc Huy [37.5%]; Nguyễn Quang Huy [9.38%]; Trần Tuấn Anh [9.38%] | 18h | 91,500 | 91,500 |
| 8 | 2.2 | Preprocessed ECG and HR/RR dataset with data review |  | 6d | 2026-10-14 | 2026-10-21 | 7 | 2026-10-14 | 2026-10-21 | 6d | 0d | Vũ Quốc Huy [33.33%]; Trần Tuấn Anh [12.5%]; Mai Tuấn Mạnh [8.33%]; Nguyễn Quang Huy [8.33%] | 30h | 162,000 | 162,000 |
| 9 | 2.3 | M2: ECG data readiness gate | milestone | 0d | 2026-10-21 | 2026-10-21 | 8 | 2026-10-21 | 2026-10-21 | 0d | 0d |  |  |  |  |
| 10 | 3 | **Phase 3: Analysis and model evidence** |  | 10d | 2026-10-22 | 2026-11-04 |  | 2026-10-22 | 2026-11-04 | 10d | 0d |  | 110h | 654,000 | 654,000 |
| 11 | 3.1 | ARIMA/SARIMA forecasting results |  | 8d | 2026-10-22 | 2026-11-02 | 9 | 2026-10-22 | 2026-11-02 | 8d | 2d | Trần Tuấn Anh [40.62%]; Vũ Quốc Huy [6.25%] | 30h | 150,000 | 150,000 |
| 12 | 3.2 | ML/CNN classification results |  | 9d | 2026-10-22 | 2026-11-03 | 9 | 2026-10-22 | 2026-11-03 | 9d | 1d | Mai Tuấn Mạnh [44.44%]; Vũ Quốc Huy [5.56%]; Hoàng Thị Ngọc Hân [5.56%] | 40h | 238,000 | 238,000 |
| 13 | 3.3 | ST-MEM evaluation and combined model review |  | 10d | 2026-10-22 | 2026-11-04 | 9 | 2026-10-22 | 2026-11-04 | 10d | 0d | Nguyễn Quang Huy [43.75%]; Mai Tuấn Mạnh [3.75%]; Hoàng Thị Ngọc Hân [2.5%] | 40h | 266,000 | 266,000 |
| 14 | 3.4 | M3: Model evidence review gate | milestone | 0d | 2026-11-04 | 2026-11-04 | 11, 12, 13 | 2026-11-04 | 2026-11-04 | 0d | 0d |  |  |  |  |
| 15 | 4 | **Phase 4: Static web demo** |  | 10d | 2026-11-05 | 2026-11-18 |  | 2026-11-05 | 2026-11-18 | 10d | 0d |  | 56h | 287,000 | 287,000 |
| 16 | 4.1 | Static analysis pages and prepared demo data |  | 6d | 2026-11-05 | 2026-11-12 | 14 | 2026-11-05 | 2026-11-12 | 6d | 0d | Hoàng Thị Ngọc Hân [45.83%]; Nguyễn Tuấn Anh [8.33%]; Trần Tuấn Anh [4.17%]; Mai Tuấn Mạnh [4.17%]; Nguyễn Quang Huy [4.17%] | 32h | 167,000 | 167,000 |
| 17 | 4.2 | ECG replay monitor, integration and demo review |  | 4d | 2026-11-13 | 2026-11-18 | 16 | 2026-11-13 | 2026-11-18 | 4d | 0d | Hoàng Thị Ngọc Hân [37.5%]; Vũ Quốc Huy [12.5%]; Nguyễn Tuấn Anh [12.5%]; Mai Tuấn Mạnh [6.25%]; Nguyễn Quang Huy [6.25%] | 24h | 120,000 | 120,000 |
| 18 | 4.3 | M4: Static demo review gate | milestone | 0d | 2026-11-18 | 2026-11-18 | 17 | 2026-11-18 | 2026-11-18 | 0d | 0d |  |  |  |  |
| 19 | 5 | **Phase 5: Verification and final report** |  | 10d | 2026-11-19 | 2026-12-02 |  | 2026-11-19 | 2026-12-02 | 10d | 0d |  | 38h | 212,000 | 212,000 |
| 20 | 5.1 | Verification evidence and issue resolution |  | 6d | 2026-11-19 | 2026-11-26 | 18 | 2026-11-19 | 2026-11-26 | 6d | 0d | Nguyễn Tuấn Anh [16.67%]; Vũ Quốc Huy [8.33%]; Trần Tuấn Anh [8.33%]; Mai Tuấn Mạnh [8.33%]; Nguyễn Quang Huy [4.17%]; Hoàng Thị Ngọc Hân [4.17%] | 24h | 130,000 | 130,000 |
| 21 | 5.2 | Final project report, user guide and quality review |  | 4d | 2026-11-27 | 2026-12-02 | 20 | 2026-11-27 | 2026-12-02 | 4d | 0d | Nguyễn Tuấn Anh [37.5%]; Trần Tuấn Anh [6.25%] | 14h | 82,000 | 82,000 |
| 22 | 5.3 | M5: QA and report review gate | milestone | 0d | 2026-12-02 | 2026-12-02 | 21 | 2026-12-02 | 2026-12-02 | 0d | 0d |  |  |  |  |
| 23 | 6 | **Phase 6: Acceptance and handover** |  | 5d | 2026-12-03 | 2026-12-09 |  | 2026-12-03 | 2026-12-09 | 5d | 0d |  | 12h | 67,500 | 67,500 |
| 24 | 6.1 | User acceptance and final corrections |  | 3d | 2026-12-03 | 2026-12-07 | 22 | 2026-12-03 | 2026-12-07 | 3d | 0d | Nguyễn Tuấn Anh [8.33%]; Vũ Quốc Huy [8.33%]; Trần Tuấn Anh [4.17%]; Mai Tuấn Mạnh [4.17%]; Hoàng Thị Ngọc Hân [8.33%] | 8h | 41,500 | 41,500 |
| 25 | 6.2 | Handover package, retrospective and final acceptance |  | 2d | 2026-12-08 | 2026-12-09 | 24 | 2026-12-08 | 2026-12-09 | 2d | 0d | Nguyễn Tuấn Anh [12.5%]; Trần Tuấn Anh [12.5%] | 4h | 26,000 | 26,000 |
| 26 | 6.3 | M6: Final acceptance and handover gate | milestone | 0d | 2026-12-09 | 2026-12-09 | 25 | 2026-12-09 | 2026-12-09 | 0d | 0d |  |  |  |  |

Notes:
- 2: Charter names the ECG research/demo objective, users, exclusions, deliverables, acceptance criteria and risks; team reviews it.
- 3: Every work package has one owner, estimated work, duration, dependency and completion evidence; six-person load is checked.
- 4: Quality checks, key data/model/demo risks and the weekly update channel are recorded; the baseline version is ready for team review. Phase 1 closes when the six-member team reviews the charter and baseline.
- 5: Zero-duration schedule marker M1. Review and acceptance work remains in the preceding assigned package. No actual completion or approval has been recorded.
- 7: Record list, lead/sampling details, annotations, basic signal/label plots and source provenance are reproducible.
- 8: Filtering, R-peak handling, HR/RR derivation, windowing, record-level split and checks against overlapping-window leakage are documented. Phase 2 closes when the data lead records the data-readiness check.
- 9: Zero-duration schedule marker M2. Review and acceptance work remains in the preceding assigned package. No actual completion or approval has been recorded.
- 11: Forecast configuration, held-out period, MAE/RMSE and reproducible plots are recorded with the exact model orders used.
- 12: Feature-based ML and 1D CNN results include record-level split, confusion matrix, F1/AUC and each method's window-label rule; comparisons state limits.
- 13: Checkpoint provenance, fine-tuning setup, test metrics and difference from the earlier report are explicit; demo uses saved results only. Phase 3 closes after the ARIMA/SARIMA, ML/CNN and ST-MEM leads review all three result sets together.
- 14: Zero-duration schedule marker M3. Review and acceptance work remains in the preceding assigned package. No actual completion or approval has been recorded.
- 16: Overview, ECG exploration, preprocessing, forecast and classification pages load prepared data and show source/limitations for metrics.
- 17: Recorded ECG replay, HR/RR trends and completed-window ST-MEM scores work offline; no live diagnosis or upload is implied. Phase 4 closes after the integrated demo is reviewed against the scope and limitations.
- 18: Zero-duration schedule marker M4. Review and acceptance work remains in the preceding assigned package. No actual completion or approval has been recorded.
- 20: Data, model, web and replay checks are logged; major issues are fixed or listed with owner and impact; metrics match their source files.
- 21: Report explains scope, method, WBS, schedule, roles, risks, evidence and limitations; guide shows how to open and reproduce the demo. Phase 5 closes after the report and QA evidence are checked together.
- 22: Zero-duration schedule marker M5. Review and acceptance work remains in the preceding assigned package. No actual completion or approval has been recorded.
- 24: Acceptance checklist is run on the delivered demo/report; defects are corrected or explicitly accepted with limitations.
- 25: Source, generated data, report, setup/usage instructions and decision log are handed over; team records lessons learned. Phase 6 closes when final acceptance and handover are recorded.
- 26: Zero-duration schedule marker M6. Review and acceptance work remains in the preceding assigned package. No actual completion or approval has been recorded.
